# Simple Project Plan

Schedule from MS Project, 2018-09-17 to 2019-08-09, A marks actual dates.

## Calendars

- Standard: Mon-Fri 08:00-12:00, 13:00-17:00; Sat-Sun off.

## Resources

| Resource | Group |
| --- | --- |
| 徐潞潞 | UI |
| 杨晓 | UI |
| 赵若钦 | UI |
| 郑新培 | UI |
| A资源 | 性能 |
| 谭新胜 |  |
| 张宝金 | 性能 |
| 刘野 | 性能 |
| B资源 | 性能 |

## Schedule

| ID | WBS | Task | Type | Duration | Start | Finish | Predecessors | Complete | Remaining | Actual finish | Total slack | Free slack | Constraint | Resources | Work | Actual work |
| --- | --- | --- | --- | --- | --- | --- | --- | --- | --- | --- | --- | --- | --- | --- | --- | --- |
| 1 | 1 | **人员招聘和培训** |  | 25d | 2018-09-17 A | 2018-10-19 |  | 100% |  | 2018-09-30 |  |  |  |  |  |  |
| 2 | 1.1 | 人员招聘 | manual | 11d | 2018-09-17 A | 2018-09-30 A |  | 100% |  |  |  |  |  |  |  |  |
| 3 | 2 | 项目启动 |  | 2d | 2018-10-15 A | 2018-10-16 A |  | 100% |  |  |  |  | finish no earlier than 2018-10-16 |  |  |  |
| 4 | 3 | 项目计划 |  | 8d | 2018-10-17 A | 2018-10-26 A | 3 | 100% |  |  |  |  | start no earlier than 2018-10-17 |  |  |  |
| 5 | 4 | **基础版0.1** |  | 151d? | 2018-10-29 A | 2019-05-27 |  | 6% | 142.29d? |  | 0d |  |  |  | 672h | 40h |
| 6 | 4.1 | 需求分析 | manual | 1d? | 2018-10-29 | 2018-10-29 |  |  |  |  |  |  |  |  |  |  |
| 7 | 4.2 | **概要设计** |  | 15d | 2018-10-29 | 2018-11-16 |  |  |  |  | 0d |  |  |  | 40h |  |
| 8 | 4.2.1 | UI原型设计v0.1 | manual | 15d | 2018-10-29 | 2018-11-16 |  |  |  |  |  |  |  |  |  |  |
| 9 | 4.2.2 | UI原型设计v0.2 | manual | 5d | 2018-10-29 | 2018-11-02 |  |  |  |  |  |  |  | 徐潞潞 | 40h |  |
| 10 | 4.2.3 | UI原型设计v0.3 | manual | 5d | 2018-10-29 | 2018-11-02 |  |  |  |  |  |  |  |  |  |  |
| 11 | 4.3 | **基础程序开发** |  | 25d | 2019-02-25 A | 2019-03-29 |  | 17% | 20.83d |  |  |  |  |  | 240h | 40h |
| 12 | 4.3.1 | 程序框架 |  | 5d | 2019-02-25 A | 2019-03-01 A |  | 100% |  |  |  |  |  | 张宝金 | 40h | 40h |
| 13 | 4.3.2 | 工作流引擎的集成 |  | 10d | 2019-03-04 | 2019-03-15 | 12 |  |  |  | 0d |  |  | 张宝金 | 80h |  |
| 14 | 4.3.3 | 数据模型设计 |  | 5d | 2019-03-18 | 2019-03-22 | 13 |  |  |  | 0d |  |  | 张宝金 | 40h |  |
| 15 | 4.3.4 | 自定义配置属性框架设计和实现 | manual | 5d | 2019-03-25 | 2019-03-29 | 14 |  |  |  |  |  |  | 张宝金 | 40h |  |
| 16 | 4.3.5 | UI界面框架 | manual | 5d | 2019-03-18 | 2019-03-22 |  |  |  |  |  |  |  | 徐潞潞 | 40h |  |
| 17 | 4.4 | **项目管理** |  | 26d | 2019-03-04 | 2019-04-08 |  |  |  |  | 0d |  |  |  | 72h |  |
| 18 | 4.4.1 | 项目定义基本属性 | manual | 1d | 2019-03-04 | 2019-03-04 | 12 |  |  |  |  |  |  | 刘野 | 8h |  |
| 19 | 4.4.2 | 配置项目团队 |  | 3d | 2019-03-05 | 2019-03-07 | 18 |  |  |  | 18d | 16d |  | 刘野 | 24h |  |
| 20 | 4.4.3 | 自定义项目属性 |  | 3d | 2019-04-01 | 2019-04-03 | 19, 15 |  |  |  | 2d |  |  | 张宝金 | 24h |  |
| 21 | 4.4.4 | 子项目管理 | manual | 1d | 2019-04-08 | 2019-04-08 | 20 |  |  |  |  |  |  | 张宝金 | 8h |  |
| 22 | 4.4.5 | 项目权限管理 | manual | 1d | 2019-04-08 | 2019-04-08 | 20 |  |  |  |  |  |  | 刘野 | 8h |  |
| 23 | 4.5 | **需求管理** |  | 7d? | 2019-04-09 | 2019-04-17 | 17 |  |  |  | 0d |  |  |  | 64h |  |
| 24 | 4.5.1 | 需求定义基本属性 |  | 1d | 2019-04-09 | 2019-04-09 |  |  |  |  | 0d |  |  | 刘野 | 8h |  |
| 25 | 4.5.2 | 发起/变更需求流程 |  | 3d | 2019-04-10 | 2019-04-12 | 24 |  |  |  | 0d |  |  | 刘野 | 24h |  |
| 26 | 4.5.3 | 自定义需求属性 |  | 3d | 2019-04-15 | 2019-04-17 | 25 |  |  |  | 0d |  |  | 张宝金 | 24h |  |
| 27 | 4.5.4 | 需求评审角色的自定义配置 |  | 1d? | 2019-04-09 | 2019-04-09 |  |  |  |  | 6d |  |  |  |  |  |
| 28 | 4.5.5 | 需求权限管理 |  | 1d | 2019-04-15 | 2019-04-15 | 25 |  |  |  | 2d |  |  | 刘野 | 8h |  |

Notes:
- 1: 这是摘要任务。使用摘要任务以帮助您在节中组织项目。
- 4: 这是里程碑任务。将任务工期设置为 0d 以标记项目中的事件。

| ID | WBS | Task | Type | Duration | Start | Finish | Predecessors | Total slack | Resources | Work |
| --- | --- | --- | --- | --- | --- | --- | --- | --- | --- | --- |
| 29 | 4.6 | **任务管理** |  | 28d? | 2019-04-18 | 2019-05-27 | 23 | 0d |  | 256h |
| 30 | 4.6.1 | **案例管理** |  | 28d? | 2019-04-18 | 2019-05-27 |  | 0d |  | 256h |
| 31 | 4.6.1.1 | 案例管理(创建/更改) |  | 3d | 2019-04-18 | 2019-04-22 |  | 0d | 刘野 | 24h |
| 32 | 4.6.1.2 | 测试脚本管理 |  | 1d? | 2019-04-18 | 2019-04-18 |  | 27d |  |  |
| 33 | 4.6.1.3 | 案例执行 |  | 5d | 2019-04-23 | 2019-04-29 | 31 | 0d | 张宝金 | 40h |
| 34 | 4.6.1.4 | 案例执行(调用LR) |  | 10d | 2019-04-30 | 2019-05-13 | 33 | 0d | 张宝金 | 80h |
| 35 | 4.6.1.5 | 案例执行(调用Jmeter) |  | 10d | 2019-05-14 | 2019-05-27 | 34 | 0d | 张宝金 | 80h |
| 36 | 4.6.1.6 | 测试结果管理 |  | 3d | 2019-04-30 | 2019-05-02 | 33 | 17d | 刘野 | 24h |
| 37 | 4.6.1.7 | 测试脚本生成 |  | 1d? | 2019-04-18 | 2019-04-18 |  | 27d |  |  |
| 38 | 4.6.1.8 | 案例权限管理 |  | 1d | 2019-04-23 | 2019-04-23 | 31 | 24d | 刘野 | 8h |
| 39 | 4.6.2 | **模型管理** |  | 1d? | 2019-04-22 | 2019-04-23 | 31 | 0d |  |  |
| 40 | 4.6.2.1 | 业务模型分析 | manual | 1d? | 2019-04-22 | 2019-04-23 |  |  |  |  |
| 41 | 4.6.2.2 | 测试模型管理 | manual | 1d? | 2019-04-22 | 2019-04-23 |  |  |  |  |
| 42 | 4.6.2.3 | 数据模型管理 | manual | 1d? | 2019-04-22 | 2019-04-23 |  |  |  |  |
| 43 | 4.6.2.4 | 监控模型分析 | manual | 1d? | 2019-04-22 | 2019-04-23 |  |  |  |  |
| 44 | 4.6.2.5 | 模型权限管理 | manual | 1d? | 2019-04-22 | 2019-04-23 |  |  |  |  |
| 45 | 4.6.3 | **通用任务管理** |  | 1d? | 2019-04-18 | 2019-04-18 |  | 27d |  |  |
| 46 | 4.6.3.1 | 通用任务管理(创建/更改) |  | 1d? | 2019-04-18 | 2019-04-18 |  | 27d |  |  |
| 47 | 4.6.3.2 | 通用任务子任务管理(创建/更改) |  | 1d? | 2019-04-18 | 2019-04-18 |  | 27d |  |  |
| 48 | 4.6.3.3 | 通用任务属性自定义配置 |  | 1d? | 2019-04-18 | 2019-04-18 |  | 27d |  |  |
| 49 | 4.6.3.4 | 通用任务权限管理 |  | 1d? | 2019-04-18 | 2019-04-18 |  | 27d |  |  |
| 50 | 4.6.4 | **测试报告管理** |  | 1d? | 2019-04-18 | 2019-04-18 |  | 27d |  |  |
| 51 | 4.6.4.1 | 测试报告管理(创建/更改) |  | 1d? | 2019-04-18 | 2019-04-18 |  | 27d |  |  |
| 52 | 4.6.4.2 | 测试报告属性自定义配置 |  | 1d? | 2019-04-18 | 2019-04-18 |  | 27d |  |  |
| 53 | 4.6.4.3 | 测试报告权限管理 |  | 1d? | 2019-04-18 | 2019-04-18 |  | 27d |  |  |

| ID | WBS | Task | Type | Duration | Start | Finish | Predecessors | Complete | Total slack | Constraint |
| --- | --- | --- | --- | --- | --- | --- | --- | --- | --- | --- |
| 54 | 4.7 | **工具集成** |  | 15d? | 2019-04-18 | 2019-05-08 | 23 |  | 13d |  |
| 55 | 4.7.1 | LR支持 |  | 10d | 2019-04-18 | 2019-05-01 |  |  | 18d |  |
| 56 | 4.7.2 | Jmeter适配 |  | 15d | 2019-04-18 | 2019-05-08 |  |  | 13d |  |
| 57 | 4.7.3 | QC支持 |  | 3d | 2019-04-18 | 2019-04-22 |  |  | 25d |  |
| 58 | 4.7.4 | 缺陷平台(捷科) |  | 1d? | 2019-04-18 | 2019-04-18 |  |  | 27d |  |
| 59 | 4.7.5 | 数据平台(捷科) |  | 1d? | 2019-04-18 | 2019-04-18 |  |  | 27d |  |
| 60 | 4.7.6 | IAT平台(捷科,接口自动化) |  | 1d? | 2019-04-18 | 2019-04-18 |  |  | 27d |  |
| 61 | 4.7.7 | 挡板平台(捷科) |  | 1d? | 2019-04-18 | 2019-04-18 |  |  | 27d |  |
| 62 | 4.8 | **权限管理** |  | 1d | 2018-10-29 A | 2018-10-29 A |  | 100% |  |  |
| 63 | 4.8.1 | 人员管理 | manual | 1d | 2018-10-29 A | 2018-10-29 A |  | 100% |  |  |
| 64 | 4.8.2 | 角色管理 | manual | 1d | 2018-10-29 A | 2018-10-29 A |  | 100% |  |  |
| 65 | 4.8.3 | 角色人员关系管理 | manual | 1d | 2018-10-29 A | 2018-10-29 A |  | 100% |  |  |
| 66 | 4.8.4 | 自定义角色权限 | manual | 1d | 2018-10-29 A | 2018-10-29 A |  | 100% |  |  |
| 67 | 5 | **基础版0.2** |  | 10d | 2019-05-28 | 2019-06-10 | 5 |  | 0d |  |
| 68 | 5.1 | **系统架构改造** |  | 10d | 2019-05-28 | 2019-06-10 |  |  | 0d |  |
| 69 | 5.1.1 | 适配微服务改造 |  | 10d | 2019-05-28 | 2019-06-10 |  |  | 0d |  |
| 70 | 6 | 加强版提交0.3 |  | 22d | 2019-06-11 | 2019-07-10 | 67 |  | 0d | finish no earlier than 2019-04-30 |
| 71 | 7 | 加强版提交0.4 |  | 1d | 2019-07-11 | 2019-07-11 | 70 |  | 21d | finish no earlier than 2019-05-31 |
| 72 | 8 | 最终版提交1.0 |  | 22d | 2019-07-11 | 2019-08-09 | 70 |  | 0d |  |
| 73 | 9 | 在项目中试用优化 |  | 66d | 2018-10-29 | 2019-01-28 |  |  | 89d |  |

Notes:
- 72: 在其旁边带有图钉的任务为手动计划任务。当您不想让 Project 移动任务时请使用它们。如果您尚未获得所有信息，您也可以在工期、开始和完成字段输入任意文本或将其保留为空。
