# Simple Project Plan

Schedule from MS Project, 2018-09-17 to 2019-09-30, A marks actual dates.

## Calendars

- Standard: Mon-Fri 08:00-12:00, 13:00-17:00; Sat-Sun off.

## Resources

| Resource | Group |
| --- | --- |
| 赵小刚 | 数据 |
| 张宝金 | 性能 |
| 张晓虎 | 数据 |
| 谭新胜 | 数据 |
| 周小龙 | 数据 |
| 贾辰泽 | 数据 |
| 周新飞 | 数据 |
| 刘野 | 性能 |
| 高景伟 | 仿真 |
| 崔志坚 | 仿真 |
| 徐潞潞 | UI |
| 刘建玲 | 数据 |
| 刘泉甫 | 数据 |
| 杨晓 | UI |
| 赵若钦 | UI |
| 郑新培 | UI |
| 王黎 | 数据 |
| 齐正旺 | 仿真 |
| A资源 | 性能 |
| B资源 | 仿真 |
| C资源 | 数据 |
| D资源 | 性能 |

## Schedule

| ID | WBS | Task | Type | Duration | Start | Finish | Predecessors | Complete | Remaining | Total slack | Free slack | Constraint | Resources | Work | Actual work |
| --- | --- | --- | --- | --- | --- | --- | --- | --- | --- | --- | --- | --- | --- | --- | --- |
| 1 | 1 | **人员招聘和培训** |  | 25d | 2018-09-17 | 2018-10-19 |  |  |  |  |  |  |  |  |  |
| 2 | 1.1 | 人员招聘 | manual | 11d | 2018-09-17 | 2018-09-30 |  |  |  |  |  |  |  |  |  |
| 3 | 1.2 | 微服务技术研究储备 |  | 10d | 2018-10-08 | 2018-10-19 |  |  |  | 92d | 0d | finish no earlier than 2018-10-19 |  |  |  |
| 4 | 2 | 项目启动 |  | 2d | 2018-10-22 | 2018-10-23 | 3 |  |  | 92d | 0d | finish no earlier than 2018-10-16 |  |  |  |
| 5 | 3 | 项目计划 |  | 8d | 2018-10-24 | 2018-11-02 | 4 |  |  | 92d | 64d | start no earlier than 2018-10-17 |  |  |  |
| 6 | 4 | **平台设计** |  | 24d | 2018-10-15 | 2018-11-15 |  |  |  |  |  |  |  |  |  |
| 7 | 4.1 | 需求分析 | manual | 9d | 2018-10-20 | 2018-10-31 |  |  |  |  |  |  |  |  |  |
| 8 | 4.2 | 概要设计 | manual | 1d? | 2018-10-15 | 2018-10-15 |  |  |  |  |  |  |  |  |  |
| 9 | 4.3 | **界面需求设计** |  | 1d | 2018-10-15 | 2018-10-15 |  |  |  | 0d |  |  |  |  |  |
| 10 | 4.3.1 | 元数据管理 | manual | 1d | 2018-10-15 | 2018-10-15 |  |  |  |  |  |  |  |  |  |
| 11 | 4.3.2 | 监测点管理 | manual | 1d | 2018-10-15 | 2018-10-15 |  |  |  |  |  |  |  |  |  |
| 12 | 5 | **基础版提交0.1** |  | 100d? | 2018-10-29 A | 2019-03-15 | 6 | 57% | 42.73d? | 0d |  |  |  | 1732h | 1340h |
| 13 | 5.1 | 程序框架搭建 | manual | 1d | 2018-10-29 A | 2018-10-29 A |  | 100% |  |  |  |  | 赵小刚 | 8h | 8h |
| 14 | 5.2 | **规则管理** |  | 99d | 2018-10-29 A | 2019-03-14 |  | 32% | 66.89d | 0d |  |  |  | 832h | 780h |
| 15 | 5.2.1 | **质量规则** |  | 3d | 2018-11-15 A | 2018-11-20 |  | 29% | 2.12d | 0d |  |  |  | 40h |  |
| 16 | 5.2.1.1 | **1、值域检查** |  | 3d | 2018-11-15 | 2018-11-20 |  |  |  | 0d |  |  |  | 40h |  |
| 17 | 5.2.1.1.1 | 1.1、值域检查-最小最大规则 | manual | 2d | 2018-11-15 | 2018-11-19 |  |  |  |  |  |  | 赵小刚 | 16h |  |
| 18 | 5.2.1.1.2 | 1.2、值域检查-列表范围 | manual | 3d | 2018-11-15 | 2018-11-20 |  |  |  |  |  |  | 赵小刚 | 24h |  |
| 19 | 5.2.1.2 | 2、长度检查 | manual | 1d | 2018-11-15 A | 2018-11-16 A |  | 100% |  |  |  |  |  |  |  |
| 20 | 5.2.1.3 | 3、码值检查(同1.2) | manual | 1d | 2018-11-15 A | 2018-11-16 A |  | 100% |  |  |  |  |  |  |  |
| 21 | 5.2.1.4 | 4、外键 | manual | 2d | 2018-11-15 A | 2018-11-19 A |  | 100% |  |  |  |  |  |  |  |
| 22 | 5.2.1.5 | 6、时间格式的合法性 | manual | 1d | 2018-11-15 A | 2018-11-16 A |  | 100% |  |  |  |  |  |  |  |
| 23 | 5.2.1.6 | 7、数值是否有效 | manual | 1d | 2018-11-15 A | 2018-11-16 A |  | 100% |  |  |  |  |  |  |  |
| 24 | 5.2.1.7 | 8、空值的处理 | manual | 1d | 2018-11-15 A | 2018-11-16 A |  | 100% |  |  |  |  |  |  |  |
| 25 | 5.2.1.8 | 9、主键的唯一性 | manual | 1d | 2018-11-15 | 2018-11-16 |  |  |  |  |  |  |  |  |  |
| 26 | 5.2.1.9 | 10、乱码的检查 | manual | 3d | 2018-11-15 | 2018-11-20 |  |  |  |  |  |  |  |  |  |
| 27 | 5.2.1.10 | 11、重复记录检查 | manual | 2d | 2018-11-15 | 2018-11-19 |  |  |  |  |  |  |  |  |  |
| 28 | 5.2.1.11 | 12、表内关系检查点配置 | manual | 1d | 2018-11-15 | 2018-11-16 |  |  |  |  |  |  |  |  |  |
| 29 | 5.2.1.12 | 13、表间关系检查点配置 | manual | 1d | 2018-11-15 | 2018-11-16 |  |  |  |  |  |  |  |  |  |
| 30 | 5.2.1.13 | 14、总分核对检查点配置 | manual | 1d | 2018-11-15 | 2018-11-16 |  |  |  |  |  |  |  |  |  |
| 31 | 5.2.1.14 | 15、记录总数一致性检查 | manual | 2d | 2018-11-15 | 2018-11-19 |  |  |  |  |  |  |  |  |  |
| 32 | 5.2.1.15 | 16、表间字段值一致性检查 | manual | 1d | 2018-11-15 | 2018-11-16 |  |  |  |  |  |  |  |  |  |

Notes:
- 1: 这是摘要任务。使用摘要任务以帮助您在节中组织项目。
- 5: 这是里程碑任务。将任务工期设置为 0d 以标记项目中的事件。

| ID | WBS | Task | Type | Duration | Start | Finish | Predecessors | Complete | Remaining | Total slack | Free slack | Resources | Work | Actual work | Text1 |
| --- | --- | --- | --- | --- | --- | --- | --- | --- | --- | --- | --- | --- | --- | --- | --- |
| 33 | 5.2.2 | **转换规则** |  | 10d | 2018-11-15 A | 2018-11-29 |  | 85% | 1.5d | 0d |  | 赵小刚 | 80h | 68h |  |
| 34 | 5.2.2.1 | 码值转换 | manual | 10d | 2018-11-15 A | 2018-11-29 A |  | 100% |  |  |  |  |  |  |  |
| 35 | 5.2.2.2 | 默认值转换 | manual | 1d | 2018-11-15 A | 2018-11-16 A |  | 100% |  |  |  |  |  |  |  |
| 36 | 5.2.2.3 | 日期格式转换 | manual | 2d | 2018-11-15 A | 2018-11-19 A |  | 100% |  |  |  |  |  |  |  |
| 37 | 5.2.2.4 | 字符串截取 | manual | 1d | 2018-11-15 A | 2018-11-16 A |  | 100% |  |  |  |  |  |  |  |
| 38 | 5.2.2.5 | 字符串去空 | manual | 1d | 2018-11-15 A | 2018-11-16 A |  | 100% |  |  |  |  |  |  |  |
| 39 | 5.2.2.6 | 字符串补齐 | manual | 1d | 2018-11-15 A | 2018-11-16 A |  | 100% |  |  |  |  |  |  |  |
| 40 | 5.2.2.7 | 空值转换 | manual | 1d | 2018-11-15 A | 2018-11-16 A |  | 100% |  |  |  |  |  |  |  |
| 41 | 5.2.2.8 | 关联表数据源转换 | manual | 3d | 2018-11-15 | 2018-11-20 |  |  |  |  |  |  |  |  |  |
| 42 | 5.2.3 | **发布版本v0.1** |  | 95d | 2018-10-29 A | 2019-03-08 |  |  | 95d |  |  |  | 712h | 712h |  |
| 43 | 5.2.3.1 | **分布式执行测试框架** |  | 89d | 2018-10-29 A | 2019-02-28 |  |  | 89d |  |  | 赵小刚 | 712h | 712h |  |
| 44 | 5.2.3.1.1 | MQ的搭建和基础通讯配置 | manual | 1d | 2018-10-29 | 2018-10-29 |  |  |  |  |  |  |  |  | 完成 |
| 45 | 5.2.3.1.2 | 分布式任务模型设计和编码 | manual | 1d | 2018-10-29 | 2018-10-29 |  |  |  |  |  |  |  |  |  |
| 46 | 5.2.3.2 | **前端** |  | 30d | 2019-02-01 | 2019-03-14 |  |  |  |  |  |  |  |  |  |
| 47 | 5.2.3.2.1 | **数据迁移界面v0.2** |  | 26d | 2019-02-01 | 2019-03-08 |  |  |  | 0d |  |  |  |  |  |
| 48 | 5.2.3.2.1.1 | 数据源管理 |  | 3d | 2019-02-01 | 2019-02-05 |  |  |  | 25d | 0d |  |  |  | 完成 |
| 49 | 5.2.3.2.1.2 | 元数据管理 |  | 2d | 2019-02-06 | 2019-02-07 | 48 |  |  | 25d |  |  |  |  | 完成 |
| 50 | 5.2.3.2.1.3 | 产品管理 |  | 2d | 2019-02-01 | 2019-02-04 |  |  |  | 28d |  |  |  |  | 完成 |
| 51 | 5.2.3.2.1.4 | 测试集管理 |  | 2d | 2019-02-01 | 2019-02-04 | 5 |  |  | 28d |  |  |  |  |  |
| 52 | 5.2.3.2.1.5 | **案例管理** |  | 1d | 2019-02-01 | 2019-02-01 |  |  |  | 0d |  |  |  |  |  |
| 53 | 5.2.3.2.1.5.1 | 查询管理 | manual | 1d | 2019-02-01 | 2019-02-01 |  |  |  |  |  |  |  |  |  |
| 54 | 5.2.3.2.1.6 | 测试任务管理 | milestone | 0d | 2019-02-01 | 2019-02-01 |  |  |  | 30d |  |  |  |  | 完成 |
| 55 | 5.2.3.2.1.7 | 日志--测试结果管理 | manual | 5d | 2019-02-21 | 2019-02-27 |  |  |  |  |  |  |  |  | 完成 |
| 56 | 5.2.3.2.1.8 | 界面功能测试 | manual | 1d | 2019-03-08 | 2019-03-08 |  |  |  |  |  |  |  |  |  |

| ID | WBS | Task | Type | Duration | Start | Finish | Predecessors | Complete | Remaining | Total slack | Free slack | Resources | Work | Actual work |
| --- | --- | --- | --- | --- | --- | --- | --- | --- | --- | --- | --- | --- | --- | --- |
| 57 | 5.2.3.2.2 | **数据质量界面v0.1** |  | 12d | 2019-02-01 | 2019-02-18 |  |  |  | 18d |  |  |  |  |
| 58 | 5.2.3.2.2.1 | 共用/复制数据迁移的界面 |  | 2d | 2019-02-01 | 2019-02-04 |  |  |  | 18d | 0d |  |  |  |
| 59 | 5.2.3.2.2.2 | 案例管理 |  | 2d | 2019-02-05 | 2019-02-06 | 58 |  |  | 18d | 0d |  |  |  |
| 60 | 5.2.3.2.2.3 | 检查点生成? |  | 2d | 2019-02-07 | 2019-02-08 | 59 |  |  | 18d | 0d |  |  |  |
| 61 | 5.2.3.2.2.4 | 界面功能测试 |  | 6d | 2019-02-11 | 2019-02-18 | 60 |  |  | 18d |  |  |  |  |
| 62 | 5.3 | **测试引擎** |  | 1d | 2018-11-15 A | 2018-11-16 A |  | 100% |  |  |  | 谭新胜 | 8h | 8h |
| 63 | 5.3.1 | 简易模式测试器 | manual | 1d | 2018-11-15 A | 2018-11-16 A |  | 100% |  |  |  |  |  |  |
| 64 | 5.3.2 | 分页模式测试器 | manual | 1d | 2018-11-15 A | 2018-11-16 A |  | 100% |  |  |  |  |  |  |
| 65 | 5.3.3 | 联合分页模式测试器 | manual | 1d | 2018-11-15 A | 2018-11-16 A |  | 100% |  |  |  |  |  |  |
| 66 | 5.4 | **分布式计算模型支持** |  | 10d? | 2018-11-15 A | 2018-11-29 |  | 91% | 0.91d? | 0d |  |  | 88h | 80h |
| 67 | 5.4.1 | RabbitMQ的配置和开发研究 | manual | 10d | 2018-11-15 A | 2018-11-29 A |  | 100% |  |  |  | 赵小刚 | 80h | 80h |
| 68 | 5.4.2 | Job模型的设计 | manual | 1d? | 2018-11-15 | 2018-11-16 |  |  |  |  |  | 赵小刚 | 8h |  |
| 69 | 5.5 | **UI前端开发** |  | 54d | 2019-01-01 A | 2019-03-15 |  | 67% | 17.73d | 0d |  |  | 796h | 464h |
| 70 | 5.5.1 | 整体前端框架研究和实现 | manual | 10d | 2019-01-01 A | 2019-01-14 A |  | 100% |  |  |  | 徐潞潞 | 80h | 80h |
| 71 | 5.5.2 | 前端原型的设计 | manual | 13d | 2019-01-15 A | 2019-01-31 A |  | 100% |  |  |  | 徐潞潞 | 104h | 104h |
| 72 | 5.5.3 | 数据源管理 | manual | 15d | 2019-02-01 A | 2019-02-21 A |  | 100% |  |  |  | 杨晓 [50%] | 60h | 60h |
| 73 | 5.5.4 | **数据模型管理** |  | 23d | 2019-02-01 A | 2019-03-05 A |  | 100% |  |  |  |  | 52h | 52h |
| 74 | 5.5.4.1 | 数据库模型 |  | 3d | 2019-02-01 A | 2019-02-05 A |  | 100% |  |  |  | 杨晓 [50%] | 12h | 12h |
| 75 | 5.5.4.2 | 数据表模型(含字段的显示) |  | 5d | 2019-02-06 A | 2019-02-12 A | 74 | 100% |  |  |  | 杨晓 [50%] | 20h | 20h |
| 76 | 5.5.4.3 | 数据模型更改历史 |  | 5d | 2019-02-27 A | 2019-03-05 A | 75 | 100% |  |  |  | 杨晓 [50%] | 20h | 20h |
| 77 | 5.5.5 | 产品管理 | manual | 13d | 2019-02-13 A | 2019-03-01 A |  | 100% |  |  |  | 赵若钦 [50%] | 52h | 52h |
| 78 | 5.5.6 | 测试集管理 | manual | 13d | 2019-02-13 A | 2019-03-01 A |  | 100% |  |  |  | 赵若钦 [50%] | 52h | 52h |
| 79 | 5.5.7 | **迁移案例管理** |  | 31d | 2019-02-01 A | 2019-03-15 | 70 | 26% | 23d | 0d |  |  | 248h | 64h |
| 80 | 5.5.7.1 | 案例列表显示 | manual | 5d | 2019-02-15 A | 2019-02-21 A |  | 100% |  |  |  | 徐潞潞 | 40h | 40h |
| 81 | 5.5.7.2 | 案例新增 | manual | 6d | 2019-02-22 | 2019-03-01 |  |  |  |  |  | 郑新培 | 48h |  |
| 82 | 5.5.7.3 | 案例的编辑 | manual | 10d | 2019-03-04 | 2019-03-15 |  |  |  |  |  | 郑新培 | 80h |  |
| 83 | 5.5.7.4 | 查询的定义 | manual | 10d | 2019-02-01 A | 2019-02-14 |  | 30% | 7d |  |  | 徐潞潞 | 80h | 24h |

| ID | WBS | Task | Type | Duration | Start | Finish | Predecessors | Complete | Remaining | Total slack | Free slack | Resources | Work |
| --- | --- | --- | --- | --- | --- | --- | --- | --- | --- | --- | --- | --- | --- |
| 84 | 5.5.8 | **质量案例管理** |  | 8d | 2019-03-01 | 2019-03-12 |  |  |  | 0d |  |  | 68h |
| 85 | 5.5.8.1 | UI原型的设计 | manual | 3d | 2019-03-01 | 2019-03-05 |  |  |  |  |  | 谭新胜 [50%] | 12h |
| 86 | 5.5.8.2 | 案例列表显示 | manual | 2d | 2019-03-06 | 2019-03-07 | 85 |  |  |  |  | 杨晓 | 16h |
| 87 | 5.5.8.3 | 简易案例的维护 | manual | 5d | 2019-03-06 | 2019-03-12 | 77, 78, 85 |  |  |  |  | 赵若钦 | 40h |
| 88 | 5.5.9 | **日志管理** |  | 5d | 2019-02-22 A | 2019-02-28 |  | 43% | 2.86d | 0d |  |  | 32h |
| 89 | 5.5.9.1 | 轮次日志 | manual | 2d | 2019-02-22 | 2019-02-25 |  |  |  |  |  | 徐潞潞 | 16h |
| 90 | 5.5.9.2 | 案例日志 | manual | 2d | 2019-02-27 | 2019-02-28 |  |  |  |  |  | 徐潞潞 | 16h |
| 91 | 5.5.9.3 | 日志详情 | manual | 3d | 2019-02-22 A | 2019-02-26 A |  | 100% |  |  |  |  |  |
| 92 | 5.5.10 | 日志管理v0.2 | manual | 6d | 2019-03-01 | 2019-03-08 | 88 |  |  |  |  | 徐潞潞 | 48h |
| 93 | 6 | **提高版提交0.2** |  | 92d? | 2019-02-21 | 2019-06-28 | 12 |  |  | 0d |  |  | 240h |
| 94 | 6.1 | **提高版提交v0.2.1** |  | 47d? | 2019-02-21 | 2019-04-26 |  |  |  | 0d |  |  | 240h |
| 95 | 6.1.1 | **框架微服务改进** |  | 15d | 2019-02-26 | 2019-03-18 |  |  |  |  |  |  | 140h |
| 96 | 6.1.1.1 | 框架改进讨论 | manual | 3d | 2019-02-26 | 2019-02-28 |  |  |  |  |  | 谭新胜 [50%] | 12h |
| 97 | 6.1.1.2 | 框架改进设计 | manual | 2d | 2019-03-01 | 2019-03-04 | 96 |  |  |  |  | 谭新胜 [50%] | 8h |
| 98 | 6.1.1.3 | 框架改进实现 | manual | 10d | 2019-03-01 | 2019-03-14 | 96 |  |  |  |  | 赵小刚; 谭新胜 [50%] | 120h |
| 99 | 6.1.2 | **数据源适配** |  | 10d? | 2019-03-18 | 2019-03-29 |  |  |  | 0d |  |  | 80h |
| 100 | 6.1.2.1 | 文本文件支持 |  | 10d | 2019-03-18 | 2019-03-29 |  |  |  | 131d |  | 张晓虎 | 80h |
| 101 | 6.1.2.2 | MQ支持 | manual | 1d? | 2019-03-18 | 2019-03-18 |  |  |  |  |  |  |  |
| 102 | 6.1.3 | **会计分录测试v0.1--基础比对版** |  | 30d | 2019-03-11 | 2019-04-19 |  |  |  |  |  |  | 20h |
| 103 | 6.1.3.1 | 需求分析 | manual | 3d | 2019-02-21 | 2019-02-25 |  |  |  |  |  |  |  |
| 104 | 6.1.3.2 | 模型设计和UI设计 | manual | 5d | 2019-02-26 | 2019-03-04 | 103 |  |  |  |  | 谭新胜 [50%] | 20h |
| 105 | 6.1.3.3 | **比对功能开发和后端开发** |  | 21d | 2019-03-19 | 2019-04-16 | 95, 104 |  |  | 3d |  |  |  |
| 106 | 6.1.3.3.1 | 流水的数据读取 |  | 2d | 2019-03-19 | 2019-03-20 |  |  |  | 3d | 0d |  |  |
| 107 | 6.1.3.3.2 | 会计分录数据的读取 |  | 2d | 2019-03-21 | 2019-03-22 | 106 |  |  | 3d | 0d |  |  |
| 108 | 6.1.3.3.3 | 分录规则的管理(规则引擎) |  | 10d | 2019-03-25 | 2019-04-05 | 107 |  |  | 3d | 0d |  |  |
| 109 | 6.1.3.3.4 | 自动比对的实现 |  | 7d | 2019-04-08 | 2019-04-16 | 108 |  |  | 3d |  |  |  |

| ID | WBS | Task | Type | Duration | Start | Finish | Predecessors | Total slack | Free slack |
| --- | --- | --- | --- | --- | --- | --- | --- | --- | --- |
| 110 | 6.1.3.4 | **界面开发** |  | 18d | 2019-03-18 | 2019-04-10 | 104, 69 | 7d |  |
| 111 | 6.1.3.4.1 | 数据源管理-流水&分录 |  | 1d | 2019-03-18 | 2019-03-18 |  | 24d |  |
| 112 | 6.1.3.4.2 | 分录规则的管理页面 |  | 10d | 2019-03-18 | 2019-03-29 |  | 7d | 0d |
| 113 | 6.1.3.4.3 | 案例管理页面？ |  | 3d | 2019-04-01 | 2019-04-03 | 112 | 7d | 0d |
| 114 | 6.1.3.4.4 | 分录比对页面 |  | 3d | 2019-04-04 | 2019-04-08 | 113 | 7d | 0d |
| 115 | 6.1.3.4.5 | 统计报告页面 |  | 2d | 2019-04-09 | 2019-04-10 | 114 | 7d |  |
| 116 | 6.1.4 | **贷款还款计划测试** |  | 35d | 2019-03-11 | 2019-04-26 |  | 0d |  |
| 117 | 6.1.4.1 | 需求分析 | manual | 3d | 2019-03-11 | 2019-03-13 |  |  |  |
| 118 | 6.1.4.2 | 模型设计和UI设计 | manual | 5d | 2019-03-25 | 2019-03-29 | 117 |  |  |
| 119 | 6.1.4.3 | 后端开发和UI开发 | manual | 20d | 2019-04-01 | 2019-04-26 | 118 |  |  |
| 120 | 6.1.5 | **报表结果批量对比(中债需求)** |  | 5d | 2019-03-18 | 2019-03-22 |  | 136d |  |
| 121 | 6.1.5.1 | 后端功能 |  | 5d | 2019-03-18 | 2019-03-22 |  | 136d |  |
| 122 | 6.1.5.2 | 前端页面 |  | 5d | 2019-03-18 | 2019-03-22 |  | 136d |  |
| 123 | 6.1.6 | **调度加工测试v0.1** |  | 1d? | 2019-03-15 | 2019-03-18 |  | 0d |  |
| 124 | 6.1.6.1 | 原子任务的模型设计 | manual | 1d? | 2019-03-15 | 2019-03-18 |  |  |  |
| 125 | 6.1.6.2 | 标准资源仿真 | manual | 1d? | 2019-03-15 | 2019-03-18 |  |  |  |
| 126 | 6.1.6.3 | 仿真统计 | manual | 1d? | 2019-03-15 | 2019-03-18 |  |  |  |
| 127 | 6.1.7 | **数据探索测试v0.1** |  | 1d | 2019-03-15 | 2019-03-18 |  | 0d |  |
| 128 | 6.1.7.1 | 箱型分析实现研究 | manual | 1d | 2019-03-15 | 2019-03-18 |  |  |  |
| 129 | 6.2 | **提高版提交v0.2.2** |  | 1d? | 2019-03-15 | 2019-03-18 |  | 0d |  |
| 130 | 6.2.1 | **会计分录测试v0.2--规则分析版** |  | 1d? | 2019-03-15 | 2019-03-18 |  | 0d |  |
| 131 | 6.2.1.1 | 规则引擎的选择分析 | manual | 1d? | 2019-03-15 | 2019-03-18 |  |  |  |
| 132 | 6.2.1.2 | 模型设计和UI设计 | manual | 1d? | 2019-03-15 | 2019-03-18 |  |  |  |
| 133 | 6.2.2 | 调度加工测试v0.2 |  | 1d | 2019-03-18 | 2019-03-18 |  | 140d |  |

| ID | WBS | Task | Type | Duration | Start | Finish | Predecessors | Total slack | Free slack | Constraint |
| --- | --- | --- | --- | --- | --- | --- | --- | --- | --- | --- |
| 134 | 6.2.3 | **监管报表测试-1104中的部分报表测试** |  | 1d? | 2019-03-15 | 2019-03-18 |  | 0d |  |  |
| 135 | 6.2.3.1 | 数仓跨层加工测试功能实现 | manual | 1d? | 2019-03-15 | 2019-03-18 |  |  |  |  |
| 136 | 6.3 | **数据探索测试v0.1** |  | 1d | 2019-03-15 | 2019-03-18 |  | 0d |  |  |
| 137 | 6.3.1 | 箱型分析实现研究 | manual | 1d | 2019-03-15 | 2019-03-18 |  |  |  |  |
| 138 | 6.4 | **银行业务模型支持** |  | 80d? | 2019-03-11 | 2019-06-28 |  | 0d |  |  |
| 139 | 6.4.1 | 会计分录测试 | manual | 30d | 2019-03-11 | 2019-04-19 |  |  |  |  |
| 140 | 6.4.2 | 总分检查测试-暂缓 | manual | 20d | 2019-04-22 | 2019-05-17 | 139 |  |  |  |
| 141 | 6.4.3 | 贷款还款计划 | manual | 30d | 2019-05-20 | 2019-06-28 | 140 |  |  |  |
| 142 | 6.4.4 | 利率市场化？需求说明 | manual | 1d? | 2019-03-11 | 2019-03-11 |  |  |  |  |
| 143 | 6.4.5 | 信贷生命周期？需求说明 | manual | 1d? | 2019-03-11 | 2019-03-11 |  |  |  |  |
| 144 | 6.5 | **数据探索** |  | 1d? | 2019-03-15 | 2019-03-18 |  | 0d |  |  |
| 145 | 6.5.1 | 缺失值发现-确认需求 | manual | 1d? | 2019-03-15 | 2019-03-18 |  |  |  |  |
| 146 | 6.5.2 | 异常值发现-确认需求 | manual | 1d? | 2019-03-15 | 2019-03-18 |  |  |  |  |
| 147 | 6.5.3 | 箱型分析？需求说明 | manual | 1d? | 2019-03-15 | 2019-03-18 |  |  |  |  |
| 148 | 6.5.4 | 一致性及重复检查-设计讨论 | manual | 1d? | 2019-03-15 | 2019-03-18 |  |  |  |  |
| 149 | 6.5.5 | 无效数据统计-设计讨论 | manual | 1d? | 2019-03-15 | 2019-03-18 |  |  |  |  |
| 150 | 6.6 | **加工调度仿真-调度测试** |  | 1d? | 2019-03-15 | 2019-03-18 |  | 0d |  |  |
| 151 | 6.6.1 | 资源仿真-设计讨论 | manual | 1d? | 2019-03-15 | 2019-03-18 |  |  |  |  |
| 152 | 6.6.2 | 异常仿真-设计讨论 | manual | 1d? | 2019-03-15 | 2019-03-18 |  |  |  |  |
| 153 | 6.6.3 | 正常仿真-设计讨论 | manual | 1d? | 2019-03-15 | 2019-03-18 |  |  |  |  |
| 154 | 6.6.4 | 重复执行仿真-设计讨论 | manual | 1d? | 2019-03-15 | 2019-03-18 |  |  |  |  |
| 155 | 6.6.5 | 仿真统计-设计讨论 | manual | 1d? | 2019-03-15 | 2019-03-18 |  |  |  |  |
| 156 | 6.7 | **监管报送测试** |  | 1d? | 2019-03-15 | 2019-03-18 |  | 0d |  |  |
| 157 | 6.7.1 | 1104报表测试 | manual | 1d? | 2019-03-15 | 2019-03-18 |  |  |  |  |
| 158 | 7 | 加强版提交0.3 |  | 22d | 2019-04-01 | 2019-04-30 |  | 87d | 22d | finish no earlier than 2019-04-30 |
| 159 | 8 | 加强版提交0.4 |  | 1d | 2019-05-31 | 2019-05-31 | 158 | 86d |  | finish no earlier than 2019-05-31 |
| 160 | 9 | 最终版提交1.0 | manual | 22d | 2019-06-01 | 2019-06-30 | 158 |  |  |  |
| 161 | 10 | 在项目中试用优化 | manual | 66d | 2019-07-01 | 2019-09-30 |  |  |  |  |

Notes:
- 160: 在其旁边带有图钉的任务为手动计划任务。当您不想让 Project 移动任务时请使用它们。如果您尚未获得所有信息，您也可以在工期、开始和完成字段输入任意文本或将其保留为空。
