# Simple Project Plan

Schedule from MS Project, 2018-09-17 to 2019-09-30, A marks actual dates.

## Calendars

- Standard: Mon-Fri 08:00-12:00, 13:00-17:00; Sat-Sun off.

## Resources

| Resource | Group |
| --- | --- |
| 高景伟 | 仿真 |
| 崔志坚 | 仿真 |
| 徐潞潞 | UI |
| 杨晓 | UI |
| 赵若钦 | UI |
| 郑新培 | UI |
| 齐正旺 | 仿真 |
| B资源 | 仿真 |
| 谭新胜 |  |
| 赵小刚 |  |

## Schedule

| ID | WBS | Task | Type | Duration | Start | Finish | Predecessors | Complete | Remaining | Total slack | Free slack | Constraint | Resources | Work | Actual work |
| --- | --- | --- | --- | --- | --- | --- | --- | --- | --- | --- | --- | --- | --- | --- | --- |
| 1 | 1 | **人员招聘和培训** |  | 25d | 2018-09-17 | 2018-10-19 |  |  |  |  |  |  |  |  |  |
| 2 | 1.1 | 人员招聘 | manual | 11d | 2018-09-17 | 2018-09-30 |  |  |  |  |  |  |  |  |  |
| 3 | 2 | 项目启动 |  | 2d | 2018-10-15 | 2018-10-16 |  |  |  | 241d | 0d | finish no earlier than 2018-10-16 |  |  |  |
| 4 | 3 | 项目计划 |  | 8d | 2018-10-17 | 2018-10-26 | 3 |  |  | 241d |  | start no earlier than 2018-10-17 |  |  |  |
| 5 | 4 | **挡板基础版0.1** |  | 110d | 2018-10-29 A | 2019-03-31 |  | 24% | 83.57d | 0d |  |  |  | 1528h | 336h |
| 6 | 4.1 | **基础程序开发** |  | 10d | 2018-10-29 A | 2018-11-09 A |  | 100% |  |  |  |  |  | 320h | 320h |
| 7 | 4.1.1 | 模型设计 | manual | 5d | 2018-10-29 A | 2018-11-02 A |  | 100% |  |  |  |  | 谭新胜 | 40h | 40h |
| 8 | 4.1.2 | 程序框架 | manual | 5d | 2018-10-29 A | 2018-11-02 A |  | 100% |  |  |  |  | 赵小刚 | 40h | 40h |
| 9 | 4.1.3 | 通讯框架 | manual | 10d | 2018-10-29 A | 2018-11-09 A |  | 100% |  |  |  |  | 齐正旺 | 80h | 80h |
| 10 | 4.1.4 | UI界面 | manual | 10d | 2018-10-29 A | 2018-11-09 A |  | 100% |  |  |  |  | 高景伟; 齐正旺 | 160h | 160h |
| 11 | 4.2 | 张家口二期报文适配 |  | 53d | 2018-10-29 A | 2019-01-22 | 6 | 2% | 52d | 22d |  |  | 高景伟; 齐正旺 | 848h | 16h |
| 12 | 4.3 | **张家口一期报文适配(替换量子模拟的挡板)** |  | 12d | 2019-02-28 | 2019-03-15 | 11 |  |  | 0d |  |  |  | 192h |  |
| 13 | 4.3.1 | 挡板日志与产品交易的关联管理 | manual | 7d | 2019-02-28 | 2019-03-08 |  |  |  |  |  |  | 高景伟 | 56h |  |
| 14 | 4.3.2 | **报文的数据解码(进制转换等)** |  | 6d | 2019-02-28 | 2019-03-07 |  |  |  | 0d |  |  |  | 48h |  |
| 15 | 4.3.2.1 | 交易码解码(解码后报文拆分交易码)- | manual | 3d | 2019-02-28 | 2019-03-04 |  |  |  |  |  |  | 齐正旺 | 24h |  |
| 16 | 4.3.2.2 | 报文元素解码(拆分其它元素) | manual | 3d | 2019-03-05 | 2019-03-07 | 15 |  |  |  |  |  | 齐正旺 | 24h |  |
| 17 | 4.3.3 | 异步报文的返回(秦皇岛业务，多交易连续处理) | manual | 5d | 2019-03-08 | 2019-03-14 | 14 |  |  |  |  |  | 齐正旺 | 40h |  |
| 18 | 4.3.4 | 张家口-邯郸燃气 | manual | 5d | 2019-03-08 | 2019-03-14 | 14 |  |  |  |  |  | 高景伟 | 40h |  |
| 19 | 4.3.5 | 现场程序部署支持 | manual | 1d | 2019-03-15 | 2019-03-15 |  |  |  |  |  |  | 齐正旺 | 8h |  |
| 20 | 4.4 | **桂林核心项目模拟器** |  | 21d | 2019-03-04 | 2019-03-31 |  |  |  |  |  |  |  | 168h |  |
| 21 | 4.4.1 | 在挡板程序上编写适应桂林的简易模拟器 | manual | 9d | 2019-03-04 | 2019-03-14 |  |  |  |  |  |  | 崔志坚 | 72h |  |
| 22 | 4.4.2 | 远程部署演示 | manual | 6d | 2019-03-17 | 2019-03-22 |  |  |  |  |  |  | 崔志坚 | 48h |  |
| 23 | 4.4.3 | 确定准备入场实施人员 | manual | 6d | 2019-03-25 | 2019-03-31 |  |  |  |  |  |  | 崔志坚 | 48h |  |
| 24 | 4.4.4 | 实施人员进场（未定） | manual | 1d | 2019-03-31 | 2019-03-31 |  |  |  |  |  |  |  |  |  |

Notes:
- 1: 这是摘要任务。使用摘要任务以帮助您在节中组织项目。
- 4: 这是里程碑任务。将任务工期设置为 0d 以标记项目中的事件。

| ID | WBS | Task | Type | Duration | Start | Finish | Predecessors | Total slack | Free slack | Constraint | Resources | Work |
| --- | --- | --- | --- | --- | --- | --- | --- | --- | --- | --- | --- | --- |
| 25 | 5 | **挡板基础版0.2** |  | 49d? | 2019-03-15 | 2019-05-22 | 5 |  |  |  |  |  |
| 26 | 5.1 | **系统架构改造** |  | 33d | 2019-03-15 | 2019-04-30 |  | 0d |  |  |  |  |
| 27 | 5.1.1 | 适配微服务改造 | manual | 10d | 2019-03-15 | 2019-03-28 |  |  |  |  |  |  |
| 28 | 5.1.2 | 分布式处理报文改造 |  | 23d | 2019-03-29 | 2019-04-30 | 27 | 16d |  |  |  |  |
| 29 | 5.2 | **UI前端改造开发(待设计)** |  | 28d? | 2019-02-22 | 2019-04-02 |  | 0d |  |  |  |  |
| 30 | 5.2.1 | 前端原型的设计 |  | 13d | 2019-03-15 | 2019-04-02 |  | 36d |  |  |  |  |
| 31 | 5.2.2 | 产品管理 |  | 13d | 2019-03-15 | 2019-04-02 |  | 36d |  |  |  |  |
| 32 | 5.2.3 | 适配器管理 | manual | 1d? | 2019-02-22 | 2019-02-22 |  |  |  |  |  |  |
| 33 | 5.2.4 | 测试集管理 |  | 13d | 2019-03-15 | 2019-04-02 |  | 36d |  |  |  |  |
| 34 | 5.2.5 | 案例管理 | manual | 1d? | 2019-02-22 | 2019-02-22 |  |  |  |  |  |  |
| 35 | 5.2.6 | **日志管理** |  | 3d | 2019-02-22 | 2019-02-26 |  | 0d |  |  |  |  |
| 36 | 5.2.6.1 | 日志列表 | manual | 2d | 2019-02-22 | 2019-02-25 |  |  |  |  |  |  |
| 37 | 5.2.6.2 | 日志详情 | manual | 3d | 2019-02-22 | 2019-02-26 |  |  |  |  |  |  |
| 38 | 5.2.7 | 日志管理v0.2 |  | 6d | 2019-03-15 | 2019-03-22 | 35 | 43d |  |  |  |  |
| 39 | 6 | **仿真平台(IAT)的改造** |  | 30d | 2019-05-22 | 2019-07-03 | 25 |  |  |  |  | 8h |
| 40 | 6.1 | 改造规划 | manual | 1d? | 2019-05-22 | 2019-05-23 |  |  |  |  |  |  |
| 41 | 6.2 | 改造设计 | manual | 1d | 2019-05-22 | 2019-05-23 |  |  |  |  | 崔志坚 | 8h |
| 42 | 7 | 加强版提交0.3 |  | 22d | 2019-04-01 | 2019-04-30 |  | 87d | 22d | finish no earlier than 2019-04-30 |  |  |
| 43 | 8 | 加强版提交0.4 |  | 1d | 2019-05-31 | 2019-05-31 | 42 | 86d |  | finish no earlier than 2019-05-31 |  |  |
| 44 | 9 | 最终版提交1.0 | manual | 22d | 2019-06-01 | 2019-06-30 | 42 |  |  |  |  |  |
| 45 | 10 | 在项目中试用优化 | manual | 66d | 2019-07-01 | 2019-09-30 |  |  |  |  |  |  |

Notes:
- 44: 在其旁边带有图钉的任务为手动计划任务。当您不想让 Project 移动任务时请使用它们。如果您尚未获得所有信息，您也可以在工期、开始和完成字段输入任意文本或将其保留为空。
